Schedule from MS Project, 2026-10-01 to 2027-05-04, costs in р., A marks actual dates.
Microsoft

## Calendars

- Стандартный: Mon-Fri 09:00-13:00, 14:00-18:00; Sat-Sun off. Exceptions (off unless hours are given): 2026-11-06 09:00-13:00, 14:00-17:00 (Предпраздничный день), 2026-11-07 (Праздничный день), 2026-12-25 (Праздничный день), 2027-01-01 to 2027-01-02 (Праздничный день), 2027-01-06 09:00-13:00, 14:00-17:00 (Предпраздничный день), 2027-01-07 (Праздничный день), 2027-03-07 09:00-13:00, 14:00-17:00 (Предпраздничный день), 2027-03-08 (Праздничный день), 2027-04-19 (Предпраздничный день), 2027-04-20 to 2027-04-21 (Праздничный день), 2027-04-30 09:00-13:00, 14:00-17:00 (Предпраздничный день), 2027-05-01 (Праздничный день).

## Resources

| Resource | Unit | Rate | Cost per use |
| --- | --- | --- | --- |
| руководитель проекта |  | 15 |  |
| программист 1 |  | 14 |  |
| программист 2 |  | 15 |  |
| программист 3 |  | 12 |  |
| бизнес-аналитик |  | 11 |  |
| тест-инженер |  | 8 |  |
| технический лидер |  | 17 |  |
| компьютер | шт | 2780 |  |
| сервер | шт | 3950 |  |
| принтер | шт | 315 |  |
| ноутбук | шт | 2450 |  |
| МФУ | шт | 1120 |  |
| планшет | шт | 1780 |  |
| сервернвя ОС |  |  | 3130 |
| бумага для принтера | уп | 15 |  |
| картридж | ед | 115 |  |
| интернет |  |  |  |
| системный аналитик |  |  |  |

## Schedule

| ID | WBS | Task | Type | Duration | Start | Finish | Predecessors | Complete | Baseline start | Baseline finish | Baseline duration | Total slack | Free slack | Constraint | Resources | Work | Actual work | Cost | Baseline cost | Actual cost |
| --- | --- | --- | --- | --- | --- | --- | --- | --- | --- | --- | --- | --- | --- | --- | --- | --- | --- | --- | --- | --- |
| 1 | 1 | 1. Начало проекта | milestone, manual | 0d | 2026-10-01 A | 2026-10-01 A |  | 100% | 2026-10-01 | 2026-10-01 | 0d |  |  |  |  |  |  |  |  |  |
| 2 | 2 | **2. Анализ и сбор требований** |  | 24d | 2026-10-01 A | 2026-11-03 A |  | 100% | 2026-10-01 | 2026-11-03 | 24d |  |  |  |  | 280h | 280h | 16,204 | 16,204 | 16,194 |
| 3 | 2.1 | 3. Встреча с заказчиком |  | 2d | 2026-10-01 A | 2026-10-02 A | 1 | 100% | 2026-10-01 | 2026-10-02 | 2d |  |  |  | бизнес-аналитик; технический лидер; руководитель проекта; планшет [2 шт]; ноутбук [1 шт] | 24h | 24h | 6,354 | 6,354 | 6,354 |
| 4 | 2.2 | 4. Написание документа требований |  | 10d | 2026-10-05 A | 2026-10-16 A | 3 | 100% | 2026-10-05 | 2026-10-16 | 10d |  |  |  | бизнес-аналитик; технический лидер; ноутбук [1 шт]; МФУ [1 шт]; бумага для принтера [1 уп]; интернет [0.1%] | 160h | 160h | 5,835 | 5,835 | 5,825 |
| 5 | 2.3 | 5. Тестирование требований |  | 3d | 2026-10-19 A | 2026-10-21 A | 4 | 100% | 2026-10-19 | 2026-10-21 | 3d |  |  |  | тест-инженер | 24h | 24h | 192 | 192 | 192 |
| 6 | 2.4 | 6. Встреча с заказчиком |  | 1d | 2026-10-26 A | 2026-10-26 A | 5FS+2d | 100% | 2026-10-26 | 2026-10-26 | 1d |  |  |  | бизнес-аналитик; руководитель проекта | 16h | 16h | 208 | 208 | 208 |
| 7 | 2.5 | 7. Подготовка договора и устава проекта |  | 4d | 2026-10-27 A | 2026-10-30 A | 6 | 100% | 2026-10-27 | 2026-10-30 | 4d |  |  |  | бумага для принтера [1 уп]; картридж [1 ед]; ноутбук [1 шт]; принтер [1 шт]; руководитель проекта | 32h | 32h | 3,375 | 3,375 | 3,375 |
| 8 | 2.6 | 8. Согласование договора |  | 1d | 2026-11-02 A | 2026-11-02 A | 7 | 100% | 2026-11-02 | 2026-11-02 | 1d |  |  |  | системный аналитик | 8h | 8h |  |  |  |
| 9 | 2.7 | 9. Согласование устава проекта |  | 2d | 2026-11-02 A | 2026-11-03 A | 7 | 100% | 2026-11-02 | 2026-11-03 | 2d |  |  |  | руководитель проекта | 16h | 16h | 240 | 240 | 240 |
| 10 | 2.8 | 10. Утверждение договора и устава проекта | milestone | 0d | 2026-11-03 A | 2026-11-03 A | 8, 9 | 100% | 2026-11-03 | 2026-11-03 | 0d |  |  |  |  |  |  |  |  |  |
| 11 | 3 | **11. Проектирование решения** |  | 123d | 2026-11-04 | 2027-05-04 |  |  | 2026-11-04 | 2027-05-07 | 125.88d | 0d |  |  |  | 552.56h |  | 10,317.93 | 10,317.93 |  |
| 12 | 3.1 | 12. Написание и согласование ТЗ |  | 15d | 2026-11-04 | 2026-11-25 | 10 |  | 2026-11-04 | 2026-11-25 | 15d | 0d |  |  | бизнес-аналитик; бумага для принтера [1 уп]; интернет [0.1%]; картридж [1 ед]; компьютер [1 шт]; технический лидер | 240h |  | 6,270 | 6,270 |  |
| 13 | 3.2 | 13. Утверждение ТЗ | milestone | 0d | 2026-11-25 | 2026-11-25 | 12 |  | 2026-11-25 | 2026-11-25 | 0d | 0d |  |  |  |  |  |  |  |  |
| 14 | 3.3 | 14. Обучение специалистов предметной области |  | 3.41d | 2026-11-25 | 2026-11-30 | 13 |  | 2026-11-25 | 2026-11-30 | 3.41d | 92.84d | 0d |  | бизнес-аналитик [30%]; программист 1 [50%]; программист 2 [50%]; программист 3 [50%]; руководитель проекта [50%]; системный аналитик [50%]; тест-инженер [50%] | 81.36h |  | 962.73 | 962.73 |  |
| 15 | 3.4 | 15. Проектирование архитектуры решения |  | 5d | 2026-11-30 | 2026-12-09 | 14 |  | 2026-11-30 | 2026-12-09 | 5d | 92.84d |  |  | технический лидер [50%] | 20h |  | 340 | 340 |  |
| 16 | 3.5 | 16. Тестирование архитектуры решения |  | 4.75d | 2027-04-27 | 2027-05-04 | 15 |  | 2027-04-30 | 2027-05-07 | 4.75d | 0d |  | as late as possible | тест-инженер; технический лидер | 88h |  | 1,206 | 1,206 |  |
| 17 | 3.6 | 17. Установка средств разработки и тестирования |  | 7.41d | 2026-11-25 | 2026-12-04 | 13 |  | 2026-11-25 | 2026-12-04 | 7.41d | 100.59d | 102.5d |  | программист 1 [50%]; программист 2 [50%]; программист 3 [50%]; тест-инженер [50%]; технический лидер [50%] | 80h |  | 1,056 | 1,056 |  |
| 18 | 3.7 | 18. Написание тест-плана и вариантов тестирования |  | 6d | 2026-11-25 | 2026-12-03 | 13 |  | 2026-11-25 | 2026-12-03 | 6d | 0d |  |  | тест-инженер [50%] | 24h |  | 192 | 192 |  |
| 19 | 3.8 | 19. Встреча с заказчиком |  | 1d | 2026-12-03 | 2026-12-04 | 18 |  | 2026-12-03 | 2026-12-04 | 1d | 0d |  |  | бизнес-аналитик [40%]; руководитель проекта; технический лидер | 19.2h |  | 291.2 | 291.2 |  |
| 20 | 4 | **20. Разработка и внутреннее тестирование** |  | 76d | 2026-12-04 | 2027-03-25 |  |  | 2026-12-04 | 2027-03-25 | 76d | 0d |  |  |  | 1432h |  | 26,376 | 26,376 |  |
| 21 | 4.1 | 21. Встреча разработчиков, декомпозиция задач, назначение отвественных |  | 1d | 2026-12-04 | 2026-12-07 | 19 |  | 2026-12-04 | 2026-12-07 | 1d | 0d |  |  | программист 1; программист 2; программист 3; технический лидер | 32h |  | 464 | 464 |  |
| 22 | 4.2 | 22. Программирование |  | 45d | 2026-12-07 | 2027-02-11 | 21 |  | 2026-12-07 | 2027-02-11 | 45d | 0d |  |  | программист 1; программист 2; программист 3; сервер [1 шт]; сервернвя ОС [50%] | 1080h |  | 21,840 | 21,840 |  |
| 23 | 4.3 | 23. Улучшение кода |  | 11d | 2027-02-11 | 2027-02-26 | 22 |  | 2027-02-11 | 2027-02-26 | 11d | 0d |  |  | технический лидер | 88h |  | 1,496 | 1,496 |  |
| 24 | 4.4 | 24. Встреча разработчиков для предварительной демонстрации |  | 1d | 2027-02-26 | 2027-03-01 | 23 |  | 2027-02-26 | 2027-03-01 | 1d | 0d |  |  | программист 1; программист 2; программист 3; технический лидер | 32h |  | 464 | 464 |  |
| 25 | 4.5 | 25. Демонстрация заказчику |  | 1d | 2027-03-01 | 2027-03-02 | 24 |  | 2027-03-01 | 2027-03-02 | 1d | 0d |  |  | бизнес-аналитик; руководитель проекта; технический лидер | 24h |  | 344 | 344 |  |
| 26 | 4.6 | 26. Первая установка решения в среду тестирования |  | 5d | 2027-03-02 | 2027-03-09 | 25 |  | 2027-03-02 | 2027-03-09 | 5d | 0d |  |  | тест-инженер; технический лидер | 80h |  | 1,000 | 1,000 |  |
| 27 | 4.7 | 27. Прохождение тест-кейсов |  | 12d | 2027-03-09 | 2027-03-25 | 26 |  | 2027-03-09 | 2027-03-25 | 12d | 0d |  |  | тест-инженер | 96h |  | 768 | 768 |  |
| 28 | 4.8 | 28. Внутреннее тестирование | milestone | 0d | 2027-03-25 | 2027-03-25 | 27 |  | 2027-03-25 | 2027-03-25 | 0d | 0d |  |  |  |  |  |  |  |  |

| ID | WBS | Task | Type | Duration | Start | Finish | Predecessors | Baseline start | Baseline finish | Baseline duration | Total slack | Free slack | Constraint | Resources | Work | Cost | Baseline cost |
| --- | --- | --- | --- | --- | --- | --- | --- | --- | --- | --- | --- | --- | --- | --- | --- | --- | --- |
| 29 | 5 | **29. Тестирование на стороне заказчика** |  | 18d | 2027-03-25 | 2027-04-23 |  | 2027-03-25 | 2027-04-23 | 18d | 0d |  |  |  | 304h | 4,224 | 4,224 |
| 30 | 5.1 | 30. Первая установка в тестовую среду заказчика |  | 4d | 2027-03-25 | 2027-03-31 | 28 | 2027-03-25 | 2027-03-31 | 4d | 0d |  |  | тест-инженер [50%]; технический лидер [50%] | 32h | 400 | 400 |
| 31 | 5.2 | 31. Поставки бета-версий |  | 4d | 2027-03-31 | 2027-04-06 | 30 | 2027-03-31 | 2027-04-06 | 4d | 0d |  |  | технический лидер | 32h | 544 | 544 |
| 32 | 5.3 | 32. Доработка и исправление неисправностей |  | 10d | 2027-04-06 | 2027-04-23 | 31 | 2027-04-06 | 2027-04-23 | 10d | 0d |  |  | программист 1; программист 2; программист 3 | 240h | 3,280 | 3,280 |
| 33 | 5.4 | 33. Прохождение тестирования на стороне | milestone | 0d | 2027-04-23 | 2027-04-23 | 32 | 2027-04-23 | 2027-04-23 | 0d | 0d |  |  |  |  |  |  |
| 34 | 6 | **34. Внедрение** |  | 7d | 2027-04-23 | 2027-05-04 |  | 2027-04-23 | 2027-05-07 | 9.88d | 0d |  |  |  | 80h | 1,274 | 1,274 |
| 35 | 6.1 | 35. Установка на рабочий сервер | milestone | 0d | 2027-04-30 | 2027-04-30 | 33 | 2027-04-30 | 2027-04-30 | 0d | 1.5d | 0d | finish no earlier than 2027-04-30 | технический лидер | 24h | 528 | 528 |
| 36 | 6.2 | 36. Написание инструкций |  | 5d | 2027-04-23 | 2027-04-30 | 33 | 2027-04-23 | 2027-04-30 | 5d | 2d |  |  | бизнес-аналитик; бумага для принтера [1 уп]; картридж [1 ед] | 40h | 570 | 570 |
| 37 | 6.3 | 37. Обучение пользователей |  | 2d | 2027-04-30 | 2027-05-04 | 33 | 2027-05-05 | 2027-05-07 | 2d | 0d | 3.5d |  | бизнес-аналитик | 16h | 176 | 176 |
| 38 | 6.4 | 38. Завершение внедрения | milestone | 0d | 2027-05-04 | 2027-05-04 | 35, 36, 37 | 2027-05-07 | 2027-05-07 | 0d | 0d |  |  |  |  |  |  |
| 39 | 6.5 | 39. Конец проекта | milestone | 0d | 2027-05-04 | 2027-05-04 | 38 | 2027-05-07 | 2027-05-07 | 0d | 0d |  |  |  |  |  |  |
