# Проект Лужецкий Дмитроченко

Schedule from MS Project, 2026-09-16 to 2027-04-12, costs in ₽, A marks actual dates.
Вариант 1

## Calendars

- Стандартный: Mon-Fri 09:00-13:00, 14:00-18:00; Sat-Sun off. Exceptions (off unless hours are given): 2026-09-16 09:00-13:00, 14:00-17:00 (День перед праздником), 2026-09-17 (День Народного Единства), 2026-10-20 09:00-13:00, 14:00-17:00 (День перед праздником), 2026-10-21 (День Отца), 2026-11-02 (Деды), 2026-11-06 09:00-13:00, 14:00-17:00 (День перед революцией), 2026-11-07 (День октябрьской Революции), 2026-12-24 09:00-13:00, 14:00-17:00 (День перед рождеством), 2026-12-25 (Рождество), 2026-12-31 09:00-13:00, 14:00-17:00 (Канун Новго года), 2027-01-01 (Новый год).

## Resources

| Resource | Group | Rate | Cost per use |
| --- | --- | --- | --- |
| Руководитель проекта | A | 15 |  |
| Программист 1 | A | 14 |  |
| Программист 2 | A | 15 |  |
| Программист 3 | A | 12 |  |
| Бизнес-аналитик | AB | 11 |  |
| Тест-инженер | A | 8 |  |
| Технический лидер | A | 17 |  |
| Компьютер | A | 2780 |  |
| Сервер | A | 3950 |  |
| Принтер | A | 315 |  |
| Ноутбук | A | 2450 |  |
| МФУ | A | 1120 |  |
| Планшет | A | 1780 |  |
| Серверная ОС | A |  | 3130 |
| Бумага для принтера | A | 15 |  |
| Картридж для принтера | A | 115 |  |
| Интернет | - |  |  |

## Schedule

| ID | WBS | Task | Type | Duration | Start | Finish | Predecessors | Complete | Remaining | Baseline start | Baseline finish | Baseline duration | Total slack | Free slack | Constraint | Resources | Work | Actual work | Cost | Baseline cost | Actual cost |
| --- | --- | --- | --- | --- | --- | --- | --- | --- | --- | --- | --- | --- | --- | --- | --- | --- | --- | --- | --- | --- | --- |
| 1 | 1 | Начало проeкта | milestone | 0d | 2026-09-16 | 2026-09-16 |  |  |  | 2026-09-16 | 2026-09-16 | 0d | 143d |  |  |  |  |  |  |  |  |
| 2 | 2 | **Анализ и сбор требований** |  | 24d | 2026-09-16 A | 2026-10-22 |  | 47% | 12.72d | 2026-09-16 | 2026-10-22 | 24d | 12.5d |  |  |  | 280h | 169.69h | 16,324 | 16,324 | 11,715.64 |
| 3 | 2.1 | Встреча с заказчиком |  | 1.43d | 2026-09-16 A | 2026-09-18 A | 1 | 100% |  | 2026-09-16 | 2026-09-18 | 1.43d |  |  |  | Бизнес-аналитик; Технический лидер; Руководитель проекта; Планшет [200%]; Ноутбук | 24h | 24h | 6,354 | 6,354 | 6,354 |
| 4 | 2.2 | Написание документа требований | manual | 10.28d | 2026-09-18 A | 2026-10-05 | 3 | 90% | 1.04d | 2026-09-18 | 2026-10-02 | 10.28d |  |  |  | Бизнес-аналитик; Технический лидер; Ноутбук; МФУ; Бумага для принтера; Интернет [0.1%] | 160h | 145.69h | 5,835 | 5,835 | 5,361.64 |
| 5 | 2.3 | Тестирование требований | manual | 3d | 2026-10-02 | 2026-10-07 | 4 |  |  | 2026-10-02 | 2026-10-07 | 3d |  |  |  | Тест-инженер | 24h |  | 192 | 192 |  |
| 6 | 2.4 | Встреча с заказчиком | manual | 1d | 2026-10-09 | 2026-10-12 | 5FS+2d |  |  | 2026-10-09 | 2026-10-12 | 1d |  |  |  | Бизнес-аналитик; Руководитель проекта | 16h |  | 208 | 208 |  |
| 7 | 2.5 | Подготовка договора и устава проекта |  | 4d | 2026-10-12 | 2026-10-16 | 6 |  |  | 2026-10-12 | 2026-10-16 | 4d | 12.62d | 0d |  | Руководитель проекта; Ноутбук; Принтер; Картридж для принтера; Бумага для принтера | 32h |  | 3,375 | 3,375 |  |
| 8 | 2.6 | Согласование договора |  | 1d | 2026-10-20 | 2026-10-22 | 7 |  |  | 2026-10-20 | 2026-10-22 | 1d | 12.5d | 1d |  | Руководитель проекта | 8h |  | 120 | 120 |  |
| 9 | 2.7 | Согласование устава проекта |  | 2d | 2026-10-16 | 2026-10-20 | 7 |  |  | 2026-10-16 | 2026-10-20 | 2d | 13.5d | 0d |  | Руководитель проекта | 16h |  | 240 | 240 |  |
| 10 | 2.8 | Утверждение договора т устава проекта | milestone | 0d | 2026-10-22 | 2026-10-22 | 8, 9 |  |  | 2026-10-22 | 2026-10-22 | 0d | 12.5d | 1d |  |  |  |  |  |  |  |
| 11 | 3 | **Проектирование решения** |  | 119d | 2026-10-22 A | 2027-04-12 |  | 29% | 84.71d | 2026-10-22 | 2027-04-19 | 124d | 0d |  |  |  | 552.8h | 200h | 10,158.8 | 10,158.8 | 5,710 |
| 12 | 3.1 | Написание и согласование ТЗ |  | 15d | 2026-10-22 A | 2026-11-13 | 10 | 83% | 2.5d | 2026-10-22 | 2026-11-13 | 15d | 104d |  |  | Бизнес-аналитик; Технический лидер; Компьютер; Картридж для принтера; Бумага для принтера; Интернет [0.1%] | 240h | 200h | 6,270 | 6,270 | 5,710 |
| 13 | 3.2 | Утверждение ТЗ | milestone | 0d | 2026-11-13 A | 2026-11-13 A | 12 | 100% |  | 2026-11-13 | 2026-11-13 | 0d |  |  |  |  |  |  |  |  |  |
| 14 | 3.3 | Обучение специалистов предметной области |  | 4d | 2026-11-13 | 2026-11-19 | 13 |  |  | 2026-11-13 | 2026-11-19 | 4d | 88d | 0d |  | Бизнес-аналитик [30%]; Руководитель проекта [50%]; Программист 1 [50%]; Программист 2 [50%]; Программист 3 [50%]; Тест-инженер [50%] | 89.6h |  | 1,129.6 | 1,129.6 |  |
| 15 | 3.4 | Проектирование архитектуры решения |  | 5d | 2026-11-19 | 2026-11-30 | 14 |  |  | 2026-11-19 | 2026-11-30 | 5d | 88d |  |  | Технический лидер [50%] | 20h |  | 340 | 340 |  |
| 16 | 3.5 | Тестирование архитектуры решения |  | 5d | 2027-04-05 | 2027-04-12 | 15 |  |  | 2027-04-12 | 2027-04-19 | 5d | 0d |  | as late as possible | Программист 1; Тест-инженер | 80h |  | 880 | 880 |  |
| 17 | 3.6 | Установка средств разработки и тестирования |  | 7.38d | 2026-11-13 | 2026-11-24 | 13 |  |  | 2026-11-13 | 2026-11-24 | 7.38d | 96.62d |  |  | Технический лидер [50%]; Программист 1 [50%]; Программист 2 [50%]; Программист 3 [50%]; Тест-инженер [50%] | 80h |  | 1,056 | 1,056 |  |
| 18 | 3.7 | Написание тест-плана и вариантов тестирования системы |  | 6d | 2026-11-13 | 2026-11-23 | 13 |  |  | 2026-11-13 | 2026-11-23 | 6d | 1.38d | 0d |  | Тест-инженер [50%] | 24h |  | 192 | 192 |  |
| 19 | 3.8 | Встреча с заказчиком |  | 1d | 2026-11-23 | 2026-11-24 | 18 |  |  | 2026-11-23 | 2026-11-24 | 1d | 1.38d | 0d |  | Бизнес-аналитик [40%]; Технический лидер; Руководитель проекта | 19.2h |  | 291.2 | 291.2 |  |
| 20 | 4 | **Разработка и врутреннее тестирование** |  | 76d | 2026-11-24 | 2027-03-12 |  |  |  | 2026-11-24 | 2027-03-12 | 76d | 1.38d |  |  |  | 1432h |  | 26,376 | 26,376 |  |
| 21 | 4.1 | Встреча разработчиков, декомпозиция задач, назначение ответственных |  | 1d | 2026-11-24 | 2026-11-25 | 19 |  |  | 2026-11-24 | 2026-11-25 | 1d | 1.38d | 0d |  | Программист 1; Программист 2; Программист 3; Технический лидер | 32h |  | 464 | 464 |  |
| 22 | 4.2 | Программирование |  | 45d | 2026-11-25 | 2027-01-29 | 21 |  |  | 2026-11-25 | 2027-01-29 | 45d | 1.38d | 0d |  | Программист 1; Программист 2; Программист 3; Сервер; Серверная ОС [50%] | 1080h |  | 21,840 | 21,840 |  |
| 23 | 4.3 | Улучшение кода |  | 11d | 2027-01-29 | 2027-02-15 | 22 |  |  | 2027-01-29 | 2027-02-15 | 11d | 1.38d | 0d |  | Технический лидер | 88h |  | 1,496 | 1,496 |  |
| 24 | 4.4 | Встреча разработчиков для предварительной демонстраци |  | 1d | 2027-02-15 | 2027-02-16 | 23 |  |  | 2027-02-15 | 2027-02-16 | 1d | 1.38d | 0d |  | Программист 1; Программист 2; Программист 3; Технический лидер | 32h |  | 464 | 464 |  |
| 25 | 4.5 | Демонстрация заказчику |  | 1d | 2027-02-16 | 2027-02-17 | 24 |  |  | 2027-02-16 | 2027-02-17 | 1d | 1.38d | 0d |  | Бизнес-аналитик; Технический лидер; Руководитель проекта | 24h |  | 344 | 344 |  |
| 26 | 4.6 | Первая установка решения в среду тестирования |  | 5d | 2027-02-17 | 2027-02-24 | 25 |  |  | 2027-02-17 | 2027-02-24 | 5d | 1.38d | 0d |  | Технический лидер; Тест-инженер | 80h |  | 1,000 | 1,000 |  |
| 27 | 4.7 | Прохождение тест-кейсов |  | 12d | 2027-02-24 | 2027-03-12 | 26 |  |  | 2027-02-24 | 2027-03-12 | 12d | 1.38d | 0d |  | Тест-инженер | 96h |  | 768 | 768 |  |
| 28 | 4.8 | Внутреннее тестирование | milestone | 0d | 2027-03-12 | 2027-03-12 | 27 |  |  | 2027-03-12 | 2027-03-12 | 0d | 1.38d | 0d |  |  |  |  |  |  |  |

| ID | WBS | Task | Type | Duration | Start | Finish | Predecessors | Complete | Remaining | Baseline start | Baseline finish | Baseline duration | Total slack | Free slack | Resources | Work | Actual work | Cost | Baseline cost | Actual cost |
| --- | --- | --- | --- | --- | --- | --- | --- | --- | --- | --- | --- | --- | --- | --- | --- | --- | --- | --- | --- | --- |
| 29 | 5 | **Тестирование на стороне заказчика** |  | 16d | 2027-03-12 A | 2027-04-05 |  | 9% | 14.62d | 2027-03-12 | 2027-04-12 | 21d | 0.07d |  |  | 304h | 22h | 4,224 | 4,224 | 275 |
| 30 | 5.1 | Первая установка в тестовую среду заказчика |  | 2d | 2027-03-12 A | 2027-03-16 | 28 | 69% | 0.62d | 2027-03-12 | 2027-03-16 | 2d | 0.07d | 0d | Технический лидер; Тест-инженер | 32h | 22h | 400 | 400 | 275 |
| 31 | 5.2 | Поставки бета-версий |  | 4d | 2027-03-16 | 2027-03-22 | 30 |  |  | 2027-03-16 | 2027-03-22 | 4d | 0.07d | 0d | Технический лидер | 32h |  | 544 | 544 |  |
| 32 | 5.3 | Доработка и исправление неисправностей |  | 10d | 2027-03-22 | 2027-04-05 | 31 |  |  | 2027-03-22 | 2027-04-12 | 11d | 0.07d | 0d | Программист 1; Программист 2; Программист 3 | 240h |  | 3,280 | 3,280 |  |
| 33 | 5.4 | Прохождение тестирования на стороне заказчика | milestone | 0d | 2027-04-05 | 2027-04-05 | 32 |  |  | 2027-04-12 | 2027-04-12 | 0d | 0.07d | 0d |  |  |  |  |  |  |
| 34 | 6 | **Внедрение** |  | 5d | 2027-04-05 A | 2027-04-12 |  | 2% | 4.9d | 2027-04-12 | 2027-04-19 | 5d | 0d |  |  | 80h | 1.6h | 1,314 | 1,314 | 24.67 |
| 35 | 6.1 | Установка на рабочий сервер |  | 3d | 2027-04-05 A | 2027-04-08 | 33 | 2% | 2.93d | 2027-04-12 | 2027-04-15 | 3d | 2d |  | Технический лидер | 24h | 0.53h | 408 | 408 | 9.07 |
| 36 | 6.2 | Написание инструкций |  | 5d | 2027-04-05 A | 2027-04-12 | 33 | 1% | 4.93d | 2027-04-12 | 2027-04-19 | 5d | 0d |  | Руководитель проекта; Картридж для принтера; Бумага для принтера | 40h | 0.53h | 730 | 730 | 9.73 |
| 37 | 6.3 | Обучение пользователей |  | 2d | 2027-04-05 A | 2027-04-07 | 33 | 3% | 1.93d | 2027-04-12 | 2027-04-14 | 2d | 3d |  | Бизнес-аналитик | 16h | 0.53h | 176 | 176 | 5.87 |
| 38 | 6.4 | Завершение внедрения | milestone | 0d | 2027-04-12 | 2027-04-12 | 35, 36, 37 |  |  | 2027-04-19 | 2027-04-19 | 0d | 0d |  |  |  |  |  |  |  |
| 39 | 7 | Конец проекта | milestone | 0d | 2027-04-12 | 2027-04-12 | 38 |  |  | 2027-04-19 | 2027-04-19 | 0d | 0d |  |  |  |  |  |  |  |
